| id | mondayItemId | mondayUrl | projectId | name | owner | status | priority | phase | baselineStart | baselineDue | currentStart | currentDue | sourceUpdatedAt | definitionOfDone |
| --- | --- | --- | --- | --- | --- | --- | --- | --- | --- | --- | --- | --- | --- | --- |
| deliverable-12694726978 | 12694726978 | https://businessplansplus.monday.com/boards/18406004595/pulses/12694726978 | legacy-b-studio | Internal Project Setup | Eli Fisher | done | normal | initiation | 2026-08-02 | 2026-08-03 | 2026-08-02 | 2026-08-03 | 2026-08-23T13:21:41Z |  |
| deliverable-12694582811 | 12694582811 | https://businessplansplus.monday.com/boards/18406004595/pulses/12694582811 | legacy-b-studio | Project Kickoff | Eli Fisher | done | normal | initiation | 2026-08-02 | 2026-08-03 | 2026-08-02 | 2026-08-03 | 2026-08-23T13:21:58Z |  |
| deliverable-12694582813 | 12694582813 | https://businessplansplus.monday.com/boards/18406004595/pulses/12694582813 | legacy-b-studio | Project Planning | Eli Fisher | done | normal | planning | 2026-08-02 | 2026-08-07 | 2026-08-02 | 2026-08-07 | 2026-08-23T13:31:24Z |  |
| deliverable-12694619794 | 12694619794 | https://businessplansplus.monday.com/boards/18406004595/pulses/12694619794 | legacy-b-studio | Design Concept + Client Approval | Eli Fisher | not-started | high | execution | 2026-08-09 | 2026-09-01 | 2026-08-09 | 2026-09-01 | 2026-08-26T00:16:04Z | Design review ran 2026-08-25 and the DIRECTION IS LANDED: primarily white / Gallery White base palette, with the bold headline treatment 'Build Your Legacy' set ON TOP OF the hero photo, not stacked above it. A combination of options 1 and 2. Blue Signature REJECTED, asked twice, no both times. Benji approved the palette, the photo spacing and the brand-guide treatment. Done = formal design preview at the Tue 9/1 6:15 PM session, gated on Benji's copy landing Fri 8/28. Hero image is still UNRESOLVED and is settled by the options Benji sends Friday, including the collage version he floated, which Eli deliberately did not rule out. |
| deliverable-12694619908 | 12694619908 | https://businessplansplus.monday.com/boards/18406004595/pulses/12694619908 | legacy-b-studio | Home + About Pages Built | Eli Fisher | not-started | high | execution | 2026-08-31 | 2026-09-04 | 2026-08-31 | 2026-09-04 | 2026-08-26T00:00:15Z |  |
| deliverable-12694582816 | 12694582816 | https://businessplansplus.monday.com/boards/18406004595/pulses/12694582816 | legacy-b-studio | Halfway Milestone - Meeting and Invoice | Eli Fisher | not-started | normal | execution | 2026-09-07 | 2026-09-07 | 2026-09-07 | 2026-09-07 | 2026-08-26T00:00:18Z |  |
| deliverable-12694620417 | 12694620417 | https://businessplansplus.monday.com/boards/18406004595/pulses/12694620417 | legacy-b-studio | Services + Gallery Pages Built | Eli Fisher | not-started | high | execution | 2026-09-08 | 2026-09-11 | 2026-09-08 | 2026-09-11 | 2026-08-26T00:00:34Z |  |
| deliverable-12694620424 | 12694620424 | https://businessplansplus.monday.com/boards/18406004595/pulses/12694620424 | legacy-b-studio | Contact Form + Site Launch | Eli Fisher | not-started | high | execution | 2026-09-16 | 2026-09-17 | 2026-09-16 | 2026-09-17 | 2026-08-26T00:16:11Z |  |
| deliverable-12694582818 | 12694582818 | https://businessplansplus.monday.com/boards/18406004595/pulses/12694582818 | legacy-b-studio | Internal Review | Eli Fisher | not-started | normal | monitoring | 2026-09-12 | 2026-09-14 | 2026-09-12 | 2026-09-14 | 2026-08-26T00:00:36Z |  |
| deliverable-12694582819 | 12694582819 | https://businessplansplus.monday.com/boards/18406004595/pulses/12694582819 | legacy-b-studio | Client Review | Eli Fisher | not-started | normal | monitoring | 2026-09-15 | 2026-09-15 | 2026-09-15 | 2026-09-15 | 2026-08-26T00:01:02Z |  |
| deliverable-12694726971 | 12694726971 | https://businessplansplus.monday.com/boards/18406004595/pulses/12694726971 | legacy-b-studio | Project Close Out | Eli Fisher | not-started | normal | closure | 2026-09-17 | 2026-09-17 | 2026-09-17 | 2026-09-17 | 2026-08-26T00:23:00Z |  |
| deliverable-12694726973 | 12694726973 | https://businessplansplus.monday.com/boards/18406004595/pulses/12694726973 | legacy-b-studio | Ask for Referral and Upsell | Eli Fisher | not-started | normal | closure | 2026-09-17 | 2026-09-17 | 2026-09-17 | 2026-09-17 | 2026-08-26T00:24:52Z |  |
| deliverable-12694726972 | 12694726972 | https://businessplansplus.monday.com/boards/18406004595/pulses/12694726972 | legacy-b-studio | Project Review | Eli Fisher | not-started | normal | closure | 2026-09-17 | 2026-09-17 | 2026-09-17 | 2026-09-17 | 2026-08-26T00:24:52Z |  |
| deliverable-12898114422 | 12898114422 | https://businessplansplus.monday.com/boards/18406004595/pulses/12898114422 | legacy-b-studio | Business Email Setup - benji@legacybstudio.com | Eli Fisher | not-started | normal | execution | 2026-09-01 | 2026-09-05 | 2026-09-01 | 2026-09-05 | 2026-08-26T00:02:49Z | SCOPE FENCE: NOT IN THE SIGNED QUOTE. Eli offered the setup free on the 8/25 call ('I won't even charge you for that') with no boundary stated. Google Workspace at $7/month on BENJI'S card, not BPP's. ONE mailbox only; admin and team addresses come later when he has a team. Do not overcomplicate. Blocked until Benji confirms he wants it built. Rationale given: a gmail address costs him credibility. Domain is legacybstudio.com, registered at WIX, renewal confirmed. ALWAYS KEEP THE B, Benji corrected the spelling twice and asked that it be respected. |
| deliverable-12875010177 | 12875010177 | https://businessplansplus.monday.com/boards/18406004595/pulses/12875010177 | halo-pathways | Internal Project Setup | Eli Fisher | done | normal | initiation | 2026-08-23 | 2026-08-25 | 2026-08-23 | 2026-08-25 | 2026-08-25T23:56:26Z | Client folder, board group, HubSpot deal 342019601088 and quote 322230294237 all reconciled before the kickoff. Engagement 2, separate from the closed Engagement 1 (Launch Pad). |
| deliverable-12875056682 | 12875056682 | https://businessplansplus.monday.com/boards/18406004595/pulses/12875056682 | halo-pathways | Project Kickoff | Eli Fisher | done | critical | initiation | 2026-08-25 | 2026-08-25 | 2026-08-25 | 2026-08-25 | 2026-08-26T00:09:42Z | KICKOFF RAN 2026-08-25 with Felicia + Larry (Daunte also attended). NOT Done: 3 of 4 criteria are still open. (1) MEETING SEQUENCE ONLY PARTLY BOOKED - 9/8 and 9/28 secured; Donate/Forms, Full Site Review and Training deferred to be scheduled around 9/28. (2) HALFWAY agreed VERBALLY as design approved plus the first three pages built and clickable, but the date moved Fri 9/25 to Mon 9/28 (client cruise 9/19-9/24) and it is not yet in writing. (3) AUTHORIZED APPROVER NAMED: Felicia Glanton. DONE. Larry: 'This is her baby, she's in charge of it.' (4) Recap email NOT yet sent. Closes only when the recap email lands and the remaining three sessions are booked. Investment slide was never walked against the hard stop, so $2,880 / $2,370 / the $40 deposit credit were not said aloud and must go in the recap. |
| deliverable-12875056680 | 12875056680 | https://businessplansplus.monday.com/boards/18406004595/pulses/12875056680 | halo-pathways | Project Planning - Site Architecture + Sitemap | Eli Fisher | not-started | high | planning | 2026-08-26 | 2026-09-03 | 2026-08-26 | 2026-09-03 | 2026-08-26T00:01:43Z | Deliver site-architecture-halo-pathways-v1.md to the client BEFORE the session so they arrive having marked it up. Session locks the sitemap, every page and section, the 13-to-8 content map, and the CMS plan. Also replaces every provisional date on this board with what the client actually committed to at kickoff. Two open FLAGs to close: Pathways Mentors on Get Involved vs Programs, and whether Contact is a counted page or just a form. |
| deliverable-12875010020 | 12875010020 | https://businessplansplus.monday.com/boards/18406004595/pulses/12875010020 | halo-pathways | MS 1 - Design Direction (Palette + Home + 1 Interior) | Eli Fisher | not-started | high | execution | 2026-08-31 | 2026-09-08 | 2026-08-31 | 2026-09-08 | 2026-08-25T00:25:37Z | Three palette options built on the measured Children's Network structure: deep navy #0F2445 foundation, ivory ground, metallic gold, and ONE bright accent. Sunrise coral #D2542F (recommended), Horizon teal #0F7B82, Citrus orange #C25E10. NONE of the three accents passes AA at body size on ivory, so each ships with a paired darker ink for text; values are in the architecture doc section 8. Plus the Home page and one interior page designed. Build does not start until the paired Acceptance item is signed. |
| deliverable-12887504877 | 12887504877 | https://businessplansplus.monday.com/boards/18406004595/pulses/12887504877 | halo-pathways | Acceptance: Design Direction Sign-Off | Eli Fisher | not-started | critical | execution | 2026-09-08 | 2026-09-12 | 2026-09-08 | 2026-09-12 | 2026-08-26T00:01:48Z | HARD GATE. Written approval of the palette plus the Home page and one interior page design. Contract Section 5: a request to restart or substantially redirect the design AFTER this sign-off is a change order, not a revision. That protection only exists if the sign-off is in writing. |
| deliverable-12875056647 | 12875056647 | https://businessplansplus.monday.com/boards/18406004595/pulses/12875056647 | halo-pathways | MS 2 - First Three Pages Built (Home, Our Story, HALO Model) | Eli Fisher | not-started | high | execution | 2026-09-14 | 2026-09-25 | 2026-09-14 | 2026-09-25 | 2026-08-26T00:01:51Z | The three most design-heavy pages built and CLICKABLE in staging on a real link the client can open. Includes the HALO Model diagram rebuilt as a responsive animated element, which is the most custom piece in the build and is included at no charge. This is the halfway deliverable: it is what makes Payment 2 defensible. |
| deliverable-12875010178 | 12875010178 | https://businessplansplus.monday.com/boards/18406004595/pulses/12875010178 | halo-pathways | HALFWAY MILESTONE - Review Meeting + Invoice $2,880 | Eli Fisher | not-started | high | execution | 2026-09-28 | 2026-09-28 | 2026-09-28 | 2026-09-28 | 2026-08-26T00:01:54Z | REDEFINED 2026-08-24 on Eli's call, and the old definition was wrong. Halfway is NOT all seven pages built; if all seven are built and the client is happy, that is closeout, not halfway. Halfway = design approved AND the first three pages built and clickable. Payment 2 of $2,880 invoiced AND collected. NOTE: the deposit that actually cleared was $2,200, not the $2,160 on the quote, so the final payment is $2,370 and the client carries a $40 credit. Felicia pays personally, out of pocket. |
| deliverable-12887504874 | 12887504874 | https://businessplansplus.monday.com/boards/18406004595/pulses/12887504874 | halo-pathways | Acceptance: Site Architecture Sign-Off | Eli Fisher | not-started | critical | planning | 2026-09-08 | 2026-09-12 | 2026-09-08 | 2026-09-12 | 2026-08-26T00:01:46Z | HARD GATE. Contract Section 1.3: build does not begin without written client sign-off on the site architecture. Deliverable Acceptance Form covering the sitemap, every page and section, the 13-to-8 content map, and the CMS collection plan. Not Done until the signed form is back from the named Authorized Approver and filed in the client folder. |
| deliverable-12887504880 | 12887504880 | https://businessplansplus.monday.com/boards/18406004595/pulses/12887504880 | halo-pathways | Acceptance: Halfway Milestone Sign-Off | Eli Fisher | not-started | high | execution | 2026-09-28 | 2026-09-30 | 2026-09-28 | 2026-09-30 | 2026-08-26T00:01:57Z | Client accepts the halfway deliverable in writing: design approved and the first three pages built and clickable in staging. This is the document that makes Payment 2 defensible if it is ever questioned. Signed form filed before the invoice goes out. |
| deliverable-12887504891 | 12887504891 | https://businessplansplus.monday.com/boards/18406004595/pulses/12887504891 | halo-pathways | MS 3 - Remaining Four Content Pages | Eli Fisher | not-started | high | execution | 2026-09-28 | 2026-10-02 | 2026-09-28 | 2026-10-02 | 2026-08-25T00:24:36Z | Programs and Services, Get Involved, Impact, Resources. Built, responsive, WCAG AA. Together with MS 2 this completes the seven contracted content pages. Felicia's 13 sections consolidated into these pages IS the contracted scope; un-consolidating any of them is a change order. |
| deliverable-12875010039 | 12875010039 | https://businessplansplus.monday.com/boards/18406004595/pulses/12875010039 | halo-pathways | MS 4 - Donate Page + Contact Form (built, NOT wired) | Eli Fisher | not-started | high | execution | 2026-10-05 | 2026-10-06 | 2026-10-05 | 2026-10-06 | 2026-08-25T00:25:40Z | HARD LEGAL GATE, Contract Section 11. Donate ships BUILT but NOT WIRED. No payment processor, no 501(c)(3) claim on the site, no solicitation until the client confirms IN WRITING that the IRS determination letter has issued AND that FDACS charitable-solicitation registration is done. Carries forward Rodney's 7/14 legal hold. Contact form: nine routes (participant, housing, referral, donation, volunteering, mentorship, partnership, media, general) routing to inbox + HubSpot. NO youth PII collected anywhere: the referral route collects the REFERRER, never the young person. |
| deliverable-12887504892 | 12887504892 | https://businessplansplus.monday.com/boards/18406004595/pulses/12887504892 | halo-pathways | MS 5 - CMS Collections (Happenings + Resources) | Eli Fisher | not-started | high | execution | 2026-10-07 | 2026-10-09 | 2026-10-07 | 2026-10-09 | 2026-08-25T00:24:38Z | The two self-updating collections the Halo Hub tier includes: Halo Happenings and Resources. Field schemas are in site-architecture-halo-pathways-v1.md section 4. Done = Felicia can post a new item herself without a developer, proven by her doing it once in training. A THIRD collection for impact stories and testimonials is NOT in this tier; it was priced at 700 dollars in the Complete Build. |
| deliverable-12875056681 | 12875056681 | https://businessplansplus.monday.com/boards/18406004595/pulses/12875056681 | halo-pathways | MS 6 - Commons Palette + Entity Separation | Eli Fisher | not-started | normal | execution | 2026-10-07 | 2026-10-10 | 2026-10-07 | 2026-10-10 | 2026-08-25T00:25:40Z | SCOPE FENCE, Contract Section 1.5. Two cosmetic items only: (1) shift the Commons blue toward deep navy with the surrounding palette rebalanced so the site stays cohesive; (2) entity separation, so Commons reads as Commons, keeping a clear route across to Pathways and removing the Commons Donate button since giving belongs to Pathways. No new pages, no restructure, no redesign. Anything else on Commons is a future engagement. |
| deliverable-12887504894 | 12887504894 | https://businessplansplus.monday.com/boards/18406004595/pulses/12887504894 | halo-pathways | QA Pass - Accessibility, Responsive, SEO + AEO | Eli Fisher | not-started | high | monitoring | 2026-10-12 | 2026-10-13 | 2026-10-12 | 2026-10-13 | 2026-08-25T00:24:40Z | Contract Section 1.2 makes all of this standard, not an upsell, so it is a delivery obligation. Sweep widths 320-3440 for overflow. Walk the DOM for contrast against WCAG AA, do not spot-check selectors. Titles, meta, structured data and share cards on every page. AEO so the org is findable through AI assistants. Run design-qa-gate. Evidence saved before this moves to Done. |
| deliverable-12875056310 | 12875056310 | https://businessplansplus.monday.com/boards/18406004595/pulses/12875056310 | halo-pathways | Internal Review (design-qa-gate + link/form check) | Eli Fisher | not-started | normal | monitoring | 2026-10-13 | 2026-10-14 | 2026-10-13 | 2026-10-14 | 2026-08-25T00:25:41Z | Moved AHEAD of Client Review and Launch. BPP finds its own problems before the client does. Run design-qa-gate, verify every form actually delivers to its destination inbox, check every internal and external link, and confirm the staging build matches the signed architecture page for page. |
| deliverable-12875010208 | 12875010208 | https://businessplansplus.monday.com/boards/18406004595/pulses/12875010208 | halo-pathways | Client Review - Full Site Walkthrough | Eli Fisher | not-started | normal | monitoring | 2026-10-15 | 2026-10-15 | 2026-10-15 | 2026-10-15 | 2026-08-25T00:25:42Z | Booked at kickoff, not scheduled after the fact. Client walks the entire site and flags anything. Contract Section 5 gives ONE consolidated revision round per deliverable, submitted within 5 business days, so ask for their changes as a single list. Confirm the person in the room is the named Authorized Approver. |
| deliverable-12887504899 | 12887504899 | https://businessplansplus.monday.com/boards/18406004595/pulses/12887504899 | halo-pathways | Acceptance: Go-Live Approval (written) | Eli Fisher | not-started | critical | monitoring | 2026-10-15 | 2026-10-15 | 2026-10-15 | 2026-10-15 | 2026-08-25T00:24:41Z | HARD GATE, and it must clear BEFORE launch, not after. The Glantons held the Commons domain dark for exactly this reason. Nothing goes public on halopathways.org until this signed approval is in hand. This item is the fix for the board previously sequencing Launch on 10/17 ahead of Client Review on 10/22. |
| deliverable-12875056409 | 12875056409 | https://businessplansplus.monday.com/boards/18406004595/pulses/12875056409 | halo-pathways | MS 7 - Launch halopathways.org | Eli Fisher | not-started | high | execution | 2026-10-16 | 2026-10-17 | 2026-10-16 | 2026-10-17 | 2026-08-25T00:25:43Z | Live on the custom domain, not the staging subdomain. BLOCKED until the written Go-Live Approval is in hand. BPP never fronts client hosting: the site plan sits on the client's own payment method before the domain is connected. Verify the publish by loading the live URL with a cache-buster, not by trusting the API response. |
| deliverable-12887504911 | 12887504911 | https://businessplansplus.monday.com/boards/18406004595/pulses/12887504911 | halo-pathways | Training Session + Documentation Handoff | Eli Fisher | not-started | high | closure | 2026-10-26 | 2026-10-27 | 2026-10-26 | 2026-10-27 | 2026-08-25T00:24:43Z | Contract Section 1.6. Recorded training on editing text, swapping photographs and publishing updates, plus written documentation. Have Felicia post one Halo Happenings item herself during the session, so the CMS is proven usable rather than assumed. Confirm every form routes correctly before launch is called complete. |
| deliverable-12887504913 | 12887504913 | https://businessplansplus.monday.com/boards/18406004595/pulses/12887504913 | halo-pathways | Acceptance: Final Deliverable Acceptance | Eli Fisher | not-started | high | closure | 2026-10-27 | 2026-10-27 | 2026-10-27 | 2026-10-27 | 2026-08-25T00:24:45Z | Client signs off that every contracted deliverable is received: 7 content pages, Donate built, contact form routing, 2 CMS collections, Commons palette and entity separation, training and documentation. This is also the written completion notice, which the Lois closeout missed entirely. File it and log it in HubSpot. |
| deliverable-12875010209 | 12875010209 | https://businessplansplus.monday.com/boards/18406004595/pulses/12875010209 | halo-pathways | Project Close Out - Invoice + Collect $2,370 | Eli Fisher | not-started | high | closure | 2026-10-26 | 2026-10-27 | 2026-10-26 | 2026-10-27 | 2026-08-25T00:25:44Z | Payment 3 of $2,370 invoiced AND collected. This is the $2,160 project balance plus Website Care month one at $250, LESS the $40 the client overpaid on the deposit ($2,200 cleared against a $2,160 invoice). Total contract $7,450. Also: Google review requested, survey collected, and written completion notice sent AND logged in HubSpot. The Lois closeout missed that last step. |
| deliverable-12875010021 | 12875010021 | https://businessplansplus.monday.com/boards/18406004595/pulses/12875010021 | halo-pathways | Ask for Referral + Google Review | Eli Fisher | not-started | normal | closure | 2026-10-28 | 2026-10-29 | 2026-10-28 | 2026-10-29 | 2026-08-25T00:25:45Z | Warm queue already identified: HALO Copilot (the AI OS for Felicia) and the donor-marketing plus Google Ad Grant engagement, which fires when the IRS determination letter lands. Felicia uses the Claude workspace BPP built her every day and renamed it Higgins, which is the strongest proof point BPP has and the natural opening. Do NOT pitch any of this at kickoff. |
| deliverable-12875056481 | 12875056481 | https://businessplansplus.monday.com/boards/18406004595/pulses/12875056481 | halo-pathways | Project Review (Internal Retrospective) | Eli Fisher | not-started | normal | closure | 2026-10-28 | 2026-10-29 | 2026-10-28 | 2026-10-29 | 2026-08-25T00:25:45Z | Run the bpp-client-retrospective skill. Score this engagement honestly against Engagement 1. Specifically assess whether booking the full meeting sequence at kickoff changed responsiveness, and whether the five Deliverable Acceptance gates prevented the scope and approver problems that surfaced at closeout on Lois, Financial Acuity and HALO Engagement 1. |
| deliverable-12875056480 | 12875056480 | https://businessplansplus.monday.com/boards/18406004595/pulses/12875056480 | halo-pathways | Website Care - Retainer Start (30 days post-launch) | Eli Fisher | not-started | high | closure | 2026-11-16 | 2026-11-16 | 2026-11-16 | 2026-11-16 | 2026-08-25T00:25:44Z | Contract Section 9. Month one is already inside the $7,450 and is billed with Payment 3. Recurring billing of $250/mo begins 30 DAYS AFTER LAUNCH, which is roughly 11/16. Three months may be prepaid at 15 percent off ($637.50). Done = the recurring agreement has a confirmed start date and a billing method on file, so the retainer converts instead of silently lapsing. This is the piece that historically evaporates at closeout; the standalone HALO Retainer deal was already marked Lost once because the retainer rode on this build. |
| deliverable-12898119625 | 12898119625 | https://businessplansplus.monday.com/boards/18406004595/pulses/12898119625 | halo-pathways | Palette Options + Pathways Logo Review | Eli Fisher | not-started | high | planning | 2026-09-01 | 2026-09-05 | 2026-09-01 | 2026-09-05 | 2026-08-26T00:03:24Z | PALETTE WAS REOPENED AT THE 8/25 KICKOFF. Felicia had previously wanted a more playful palette distinct from HALO Commons. She has since tested colors herself, did not like the result, and is now leaning toward keeping it simple. Eli committed to bringing MULTIPLE palette options to the design phase so she is not locked into one direction. Ship in advance of the 9/8 session for markup. OPEN: a palette change may also change the LOGO COLOR. Felicia has sent the multicolor Pathways logo and confirmed she has several alternate multicolor palettes and hues that would still work. Assess the logo against each candidate palette. |
| deliverable-12898133643 | 12898133643 | https://businessplansplus.monday.com/boards/18406004595/pulses/12898133643 | halo-pathways | Schedule Remaining 3 Sessions (Donate/Forms, Full Site Review, Training) | Eli Fisher | not-started | high | planning | 2026-09-28 | 2026-09-28 | 2026-09-28 | 2026-09-28 | 2026-08-26T00:03:30Z | KICKOFF DECISION #6: Donate and Forms, Full Site Review, and Training and Handoff were DEFERRED, not booked. They get scheduled around the 9/28 halfway review. This is why the Project Kickoff item is NOT Done: its definition of done required the entire meeting sequence booked before hanging up, and only 9/8 and 9/28 were secured. All October dates on this board remain PROVISIONAL until this item closes. ALSO ASK AT THE 9/28 REVIEW, not before: is anyone besides Felicia and Larry going to want to review the site before it goes live, a board member or the attorney? That question was never asked on the kickoff call. |
| deliverable-12898109319 | 12898109319 | https://businessplansplus.monday.com/boards/18406004595/pulses/12898109319 | halo-pathways | Google for Nonprofits + halopathway.org Email (IRS-gated) | Eli Fisher | blocked | normal | execution |  |  |  |  | 2026-08-26T00:03:34Z | NO DUE DATE BY DESIGN. Blocked on the IRS 501(c)(3) determination letter, deliberately. Eli confirmed at the 8/25 kickoff that this is inside his scope of work, and that he is HOLDING it on purpose so HALO captures the benefits properly rather than setting it up early and losing them. Scope: halopathway.org email, Google for Nonprofits verification, free Google Workspace, and up to $10,000/month in Ad Grants. UNBLOCKS WHEN: Felicia forwards the determination letter. She has followed up with the attorney to confirm whether and when the filing actually went in and does not yet have an answer. Eli expects a couple of months. Same gate blocks full Donate page functionality. |

Links (id, mondayItemId, mondayUrl, projectId, deliverableId, checkpointIds, name, owner, status, priority, baselineDue, currentDue, latestSafeDate, blockedBy, clientOwned, evidenceUrl, sourceUpdatedAt):
- task-12694620654 12694620654 https://businessplansplus.monday.com/boards/18406004597/pulses/12694620654 legacy-b-studio deliverable-12694726978 Google Drive Folder Created done normal  2026-08-23T13:21:45Z
- task-12694620655 12694620655 https://businessplansplus.monday.com/boards/18406004597/pulses/12694620655 legacy-b-studio deliverable-12694726978 Client Project Set Up done normal  2026-08-23T13:21:46Z
- task-12694620663 12694620663 https://businessplansplus.monday.com/boards/18406004597/pulses/12694620663 legacy-b-studio deliverable-12694582811 Set up Project Kickoff Meeting done normal  2026-08-23T13:21:52Z
- task-12694620660 12694620660 https://businessplansplus.monday.com/boards/18406004597/pulses/12694620660 legacy-b-studio deliverable-12694582811 Collect Credentials & Project Assets done normal  2026-08-23T13:21:54Z
- task-12694620656 12694620656 https://businessplansplus.monday.com/boards/18406004597/pulses/12694620656 legacy-b-studio deliverable-12694582811 Send Post Kickoff Onboarding Template done normal  2026-08-23T13:21:56Z
- task-12694620657 12694620657 https://businessplansplus.monday.com/boards/18406004597/pulses/12694620657 legacy-b-studio deliverable-12694582813 Define Scope not-started normal  2026-08-02T17:51:47Z
- task-12694620658 12694620658 https://businessplansplus.monday.com/boards/18406004597/pulses/12694620658 legacy-b-studio deliverable-12694582813 Input Timeline in Hubspot & Monday not-started normal  2026-08-02T17:51:47Z
- task-12694620659 12694620659 https://businessplansplus.monday.com/boards/18406004597/pulses/12694620659 legacy-b-studio deliverable-12694582813 Develop Project Execution Plan not-started normal  2026-08-02T17:51:48Z
- task-12898165366 12898165366 https://businessplansplus.monday.com/boards/18406004597/pulses/12898165366 legacy-b-studio deliverable-12694619794 legacy-design-review Copy Prompts + Services/Pricing Questions to Benji Eli Fisher not-started high 2026-08-27 2026-08-27 2026-08-27  2026-08-26T00:15:51Z
- task-12898165512 12898165512 https://businessplansplus.monday.com/boards/18406004597/pulses/12898165512 legacy-b-studio deliverable-12694619794 legacy-design-review CLIENT: Page Copy - Home, About, Services not-started high 2026-08-28 2026-08-28 2026-08-28 True 2026-08-26T00:15:55Z
- task-12898163425 12898163425 https://businessplansplus.monday.com/boards/18406004597/pulses/12898163425 legacy-b-studio deliverable-12694619794 legacy-design-review CLIENT: Hero Image Options (incl. collage) not-started high 2026-08-28 2026-08-28 2026-08-28 True 2026-08-26T00:15:59Z
- task-12898174708 12898174708 https://businessplansplus.monday.com/boards/18406004597/pulses/12898174708 legacy-b-studio deliverable-12694619794 legacy-design-review CLIENT: Testimonials / Client Quotes - Proof Section not-started high 2026-08-28 2026-08-28 2026-08-28 True 2026-08-26T00:16:04Z
- task-12898165675 12898165675 https://businessplansplus.monday.com/boards/18406004597/pulses/12898165675 legacy-b-studio deliverable-12694620424 legacy-launch-closeout HubSpot Contact Form + Deal Pipeline + Training Eli Fisher not-started high 2026-09-16 2026-09-16 2026-09-15  2026-08-26T00:16:10Z
- task-12694620661 12694620661 https://businessplansplus.monday.com/boards/18406004597/pulses/12694620661 legacy-b-studio deliverable-12694582818 Send out Project Brief + Milestone Links not-started normal  2026-08-02T17:51:48Z
- task-12694620662 12694620662 https://businessplansplus.monday.com/boards/18406004597/pulses/12694620662 legacy-b-studio deliverable-12694582819 Go Over Project Brief not-started normal  2026-08-02T17:51:48Z
- task-12694620665 12694620665 https://businessplansplus.monday.com/boards/18406004597/pulses/12694620665 legacy-b-studio deliverable-12694726971 legacy-launch-closeout Set up Project Closeout Meeting not-started normal 2026-09-15  2026-08-02T17:51:49Z
- task-12694620664 12694620664 https://businessplansplus.monday.com/boards/18406004597/pulses/12694620664 legacy-b-studio deliverable-12694726971 legacy-launch-closeout Collect Final Payment not-started normal 2026-09-15  2026-08-02T17:51:49Z
- task-12694620666 12694620666 https://businessplansplus.monday.com/boards/18406004597/pulses/12694620666 legacy-b-studio deliverable-12694726971 legacy-launch-closeout Collect Survery not-started normal 2026-09-15  2026-08-02T17:51:50Z
- task-12694620667 12694620667 https://businessplansplus.monday.com/boards/18406004597/pulses/12694620667 legacy-b-studio deliverable-12694726971 legacy-launch-closeout Collect Review? not-started normal 2026-09-15  2026-08-02T17:51:50Z
- task-12898163435 12898163435 https://businessplansplus.monday.com/boards/18406004597/pulses/12898163435 legacy-b-studio deliverable-12694726971 legacy-launch-closeout Webflow Editor Link + Marketing Plan Handoff Eli Fisher not-started normal 2026-09-17 2026-09-17 2026-09-15  2026-08-26T00:23:03Z
- task-12694620668 12694620668 https://businessplansplus.monday.com/boards/18406004597/pulses/12694620668 legacy-b-studio deliverable-12694726972 Finalizing Project not-started normal  2026-08-02T17:51:50Z
- task-12875044746 12875044746 https://businessplansplus.monday.com/boards/18406004597/pulses/12875044746 halo-pathways deliverable-12875010177 Google Drive Folder Created Eli Fisher done normal 2026-08-25 2026-08-25 2026-08-25  2026-08-25T23:56:22Z
- task-12875065814 12875065814 https://businessplansplus.monday.com/boards/18406004597/pulses/12875065814 halo-pathways deliverable-12875010177 Client Project Set Up Eli Fisher done normal 2026-08-25 2026-08-25 2026-08-25  2026-08-25T23:56:24Z
- task-12875066165 12875066165 https://businessplansplus.monday.com/boards/18406004597/pulses/12875066165 halo-pathways deliverable-12875056682 Set up Project Kickoff Meeting Eli Fisher done critical 2026-08-25 2026-08-25 2026-08-25  2026-08-25T23:56:36Z
- task-12875066166 12875066166 https://businessplansplus.monday.com/boards/18406004597/pulses/12875066166 halo-pathways deliverable-12875056682 Collect Credentials & Project Assets Eli Fisher done critical 2026-08-25 2026-08-25 2026-08-25  2026-08-25T23:56:38Z
- task-12875066167 12875066167 https://businessplansplus.monday.com/boards/18406004597/pulses/12875066167 halo-pathways deliverable-12875056682 Send Post Kickoff Onboarding Template Eli Fisher done critical 2026-08-26 2026-08-26 2026-08-26  2026-08-25T23:56:40Z
- task-12875066168 12875066168 https://businessplansplus.monday.com/boards/18406004597/pulses/12875066168 halo-pathways deliverable-12875056680 halo-architecture-design Define Scope Eli Fisher not-started high 2026-08-29 2026-08-29 2026-08-29  2026-08-23T13:48:16Z
- task-12875066169 12875066169 https://businessplansplus.monday.com/boards/18406004597/pulses/12875066169 halo-pathways deliverable-12875056680 halo-architecture-design Input Timeline in Hubspot & Monday Eli Fisher not-started high 2026-08-29 2026-08-29 2026-08-29  2026-08-23T13:48:16Z
- task-12875066170 12875066170 https://businessplansplus.monday.com/boards/18406004597/pulses/12875066170 halo-pathways deliverable-12875056680 halo-architecture-design Develop Project Execution Plan Eli Fisher not-started high 2026-08-29 2026-08-29 2026-08-29  2026-08-23T13:48:32Z
- task-12875045253 12875045253 https://businessplansplus.monday.com/boards/18406004597/pulses/12875045253 halo-pathways deliverable-12875056310 halo-full-site-review Send out Project Brief + Milestone Links Eli Fisher not-started normal 2026-10-20 2026-10-20 2026-10-13  2026-08-23T13:46:07Z
- task-12875066209 12875066209 https://businessplansplus.monday.com/boards/18406004597/pulses/12875066209 halo-pathways deliverable-12875010208 halo-full-site-review Go Over Project Brief Eli Fisher not-started normal 2026-10-22 2026-10-22 2026-10-13  2026-08-23T13:46:07Z
- task-12875045150 12875045150 https://businessplansplus.monday.com/boards/18406004597/pulses/12875045150 halo-pathways deliverable-12875010209 halo-training-closeout Set up Project Closeout Meeting Eli Fisher not-started high 2026-10-27 2026-10-27 2026-10-23  2026-08-23T13:48:32Z
- task-12875045151 12875045151 https://businessplansplus.monday.com/boards/18406004597/pulses/12875045151 halo-pathways deliverable-12875010209 halo-training-closeout Collect Final Payment Eli Fisher not-started high 2026-10-27 2026-10-27 2026-10-23  2026-08-23T13:48:33Z
- task-12875045152 12875045152 https://businessplansplus.monday.com/boards/18406004597/pulses/12875045152 halo-pathways deliverable-12875010209 halo-training-closeout Collect Survey Eli Fisher not-started high 2026-10-27 2026-10-27 2026-10-23  2026-08-23T13:48:32Z
- task-12875066164 12875066164 https://businessplansplus.monday.com/boards/18406004597/pulses/12875066164 halo-pathways deliverable-12875010209 halo-training-closeout Collect Review? Eli Fisher not-started high 2026-10-27 2026-10-27 2026-10-23  2026-08-23T13:48:32Z
- task-12875065847 12875065847 https://businessplansplus.monday.com/boards/18406004597/pulses/12875065847 halo-pathways deliverable-12875056481 Finalizing Project Eli Fisher not-started normal 2026-10-29 2026-10-29 2026-10-29  2026-08-23T13:46:07Z
